# BRAAVG002 - Monitoramento de ictio e bentos - Brumado - AVG

Schedule from MS Project XML, 2023-08-01 to 2026-08-07, A marks actual dates.

## Calendars

- Standard: Mon-Fri 08:00-12:00, 13:00-17:00; Sat-Sun off.

## Resources

| Resource |
| --- |
| Felipe Normando |
| Ana Clara |
| Ismayllen Masson |

## Schedule

| ID | WBS | Task | Type | Duration | Start | Finish | Predecessors | Complete | Constraint | Resources | Text15 | Text19 | Number15 | Number20 |
| --- | --- | --- | --- | --- | --- | --- | --- | --- | --- | --- | --- | --- | --- | --- |
| 1 | 1 | **INICIAÇÃO** |  | 0d | 2023-08-01 A | 2023-08-01 A |  | 100% |  |  | NETPROJECT | 1650 | 340 | 340 |
| 2 | 1.1 | Start do Projeto | milestone | 0d | 2023-08-01 A | 2023-08-01 A |  | 100% |  | Ana Clara | NETPROJECT | 1660 | 341 | 341 |
| 3 | 2 | **PLANEJAMENTO** |  | 0d | 2023-08-01 A | 2023-08-01 A |  | 100% |  |  | NETPROJECT | 1670 | 342 | 342 |
| 4 | 2.1 | Renovação da licença | milestone | 0d | 2023-08-01 A | 2023-08-01 A |  | 100% |  | Ana Clara | NETPROJECT | 1680 | 343 | 343 |
| 5 | 2.2 | Preenchimento do Formulários Opyta | milestone | 0d | 2023-08-01 A | 2023-08-01 A |  | 100% |  | Ana Clara | NETPROJECT | 1690 | 344 | 344 |
| 6 | 3 | Reunião de Kick-off | milestone | 0d | 2023-08-01 A | 2023-08-01 A |  | 100% |  | Ana Clara | NETPROJECT | 1700 | 339 | 339 |
| 7 | 4 | **CAMPO** |  | 0d | 2023-08-01 A | 2026-07-08 |  | 39% |  |  | NETPROJECT | 1710 | 372 | 372 |
| 8 | 4.1 | Campo Ago | milestone | 0d | 2023-08-08 A | 2023-08-12 A | 1FS+6d | 100% |  | Ana Clara | NETPROJECT | 1720 | 346 | 346 |
| 9 | 4.2 | Campo Set | milestone | 0d | 2023-09-11 A | 2023-09-15 A | 8FS+19d | 100% | must start on 2023-09-11 | Ana Clara | NETPROJECT | 1730 | 373 | 373 |
| 10 | 4.3 | Campo Out | milestone | 0d | 2023-10-02 A | 2023-10-06 A | 9FS+16d | 100% |  | Ana Clara | NETPROJECT | 1740 | 375 | 375 |
| 11 | 4.4 | Campo Nov | milestone | 0d | 2023-11-06 A | 2023-11-10 A | 10FS+30d | 100% |  | Ana Clara | NETPROJECT | 1750 | 376 | 376 |
| 12 | 4.5 | Campo Dez | milestone | 0d | 2023-12-04 A | 2023-12-07 A | 11FS+23d | 100% |  | Ana Clara | NETPROJECT | 1760 | 377 | 377 |
| 13 | 4.6 | Campo Jan | milestone | 0d | 2024-01-07 A | 2024-01-11 A | 12FS+30d | 100% |  | Ana Clara | NETPROJECT | 1770 | 378 | 378 |
| 14 | 4.7 | Campo Fev | milestone | 0d | 2024-02-26 A | 2024-03-01 A |  | 100% | must start on 2024-02-26 | Ana Clara | NETPROJECT | 1780 | 379 | 379 |
| 15 | 4.8 | Campo Mar | milestone | 0d | 2024-03-25 A | 2024-03-29 A |  | 100% | must start on 2024-03-25 | Ana Clara | NETPROJECT | 1790 | 380 | 380 |
| 16 | 4.9 | Campo Abr | milestone | 0d | 2024-04-22 A | 2024-04-26 A |  | 100% | must start on 2024-04-22 | Ana Clara | NETPROJECT | 1800 | 381 | 381 |
| 17 | 4.10 | Campo Mai | milestone | 0d | 2024-05-20 A | 2024-05-24 A |  | 100% | must start on 2024-05-20 | Ana Clara | NETPROJECT | 1810 | 382 | 382 |
| 18 | 4.11 | Campo Jun | milestone | 0d | 2024-06-17 A | 2024-06-21 A |  | 100% | must start on 2024-06-17 | Ana Clara | NETPROJECT | 1820 | 383 | 383 |
| 19 | 4.12 | Campo Jul | milestone | 0d | 2024-07-01 A | 2024-07-05 A |  | 100% | must start on 2024-07-01 | Ana Clara | NETPROJECT | 1830 | 384 | 384 |
| 20 | 4.13 | Campo Ago | milestone | 0d | 2023-08-01 A | 2023-08-05 A |  | 100% |  | Ana Clara | NETPROJECT | 1840 | 385 | 385 |
| 21 | 4.14 | Campo Set | milestone | 0d | 2024-09-09 A | 2024-09-13 A |  | 100% | must start on 2024-09-09 | Ana Clara | NETPROJECT | 1850 | 386 | 386 |
| 22 | 4.15 | Campo Out | milestone | 0d | 2024-10-23 | 2024-10-27 |  |  | must start on 2024-10-23 | Ana Clara | NETPROJECT | 1860 | 387 | 387 |
| 23 | 4.16 | Campo Nov | milestone | 0d | 2024-11-25 | 2024-11-29 |  |  | must start on 2024-11-25 | Ana Clara | NETPROJECT | 1870 | 388 | 388 |
| 24 | 4.17 | Campo Dez | milestone | 0d | 2024-12-16 | 2024-12-20 |  |  | must start on 2024-12-16 | Ana Clara | NETPROJECT | 1880 | 389 | 389 |
| 25 | 4.18 | Campo Jan-25 | milestone | 0d | 2025-01-06 | 2025-01-10 | 24FS+30d |  | must start on 2025-01-06 | Ana Clara | NETPROJECT | 1890 | 390 | 390 |
| 26 | 4.19 | Campo Fev -25 | milestone | 0d | 2025-02-10 | 2025-02-14 | 25FS+30d |  |  | Ana Clara | NETPROJECT | 1900 | 391 | 391 |
| 27 | 4.20 | Campo Mar -25 | milestone | 0d | 2025-03-10 | 2025-03-14 | 26FS+30d |  | must start on 2025-03-10 | Ana Clara | NETPROJECT | 1910 | 392 | 392 |
| 28 | 4.21 | Campo Abr - 25 | milestone | 0d | 2025-04-07 | 2025-04-11 | 27FS+30d |  | must start on 2025-04-07 | Ana Clara | NETPROJECT | 1920 | 393 | 393 |
| 29 | 4.22 | Campo Mai - 25 | milestone | 0d | 2025-05-26 | 2025-05-30 | 28FS+30d |  | must start on 2025-05-26 | Ana Clara | NETPROJECT | 1930 | 394 | 394 |
| 30 | 4.23 | Campo Jun - 25 | milestone | 0d | 2025-06-16 | 2025-06-20 | 29FS+30d |  | must start on 2025-06-16 | Ana Clara | NETPROJECT | 1940 | 395 | 395 |
| 31 | 4.24 | Campo Jul - 25 | milestone | 0d | 2025-07-07 | 2025-07-11 | 30FS+30d |  | must start on 2025-07-07 | Ana Clara | NETPROJECT | 1950 | 396 | 396 |
| 32 | 4.25 | Campo Ago-25 | milestone | 0d | 2025-08-25 | 2025-08-29 |  |  | must start on 2025-08-25 | Ana Clara | NETPROJECT | 1951 | 1926 | 1926 |
| 33 | 4.26 | Campo Set-25 | milestone | 0d | 2025-09-15 | 2025-09-19 |  |  | must start on 2025-09-15 | Ana Clara | NETPROJECT | 1952 | 1927 | 1927 |
| 34 | 4.27 | Campo Out-25 | milestone | 0d | 2025-10-13 | 2025-10-17 | 33FS+30d |  | must start on 2025-10-13 | Ana Clara | NETPROJECT | 1953 | 1928 | 1928 |
| 35 | 4.28 | Campo Nov-25 | milestone | 0d | 2025-11-24 | 2025-11-28 | 34FS+25d |  | must start on 2025-11-24 | Ana Clara | NETPROJECT | 1954 | 1929 | 1929 |
| 36 | 4.29 | Campo Dez-25 | milestone | 0d | 2025-12-15 | 2025-12-19 | 35FS+25d |  | must start on 2025-12-15 | Ana Clara | NETPROJECT | 1955 | 1930 | 1930 |
| 37 | 4.30 | Campo Jan-26 | milestone | 0d | 2026-01-12 | 2026-01-16 | 36FS+25d |  | must start on 2026-01-12 | Ana Clara | NETPROJECT | 1956 | 1931 | 1931 |
| 38 | 4.31 | Campo Fev-26 | milestone | 0d | 2026-02-02 | 2026-02-06 | 37FS+25d |  | must start on 2026-02-02 | Ana Clara | NETPROJECT | 1957 | 1932 | 1932 |
| 39 | 4.32 | Campo Mar-26 | milestone | 0d | 2026-03-04 | 2026-03-08 | 38FS+25d |  |  | Ana Clara | NETPROJECT | 1958 | 1933 | 1933 |
| 40 | 4.33 | Campo Abr-26 | milestone | 0d | 2026-04-03 | 2026-04-07 | 39FS+25d |  |  | Ana Clara | NETPROJECT | 1959 | 1934 | 1934 |
| 41 | 4.34 | Campo Mai-26 | milestone | 0d | 2026-05-05 | 2026-05-09 | 40FS+25d |  |  | Ana Clara | NETPROJECT | 1960 | 1935 | 1935 |
| 42 | 4.35 | Campo Jun-26 | milestone | 0d | 2026-06-04 | 2026-06-08 | 41FS+25d |  |  | Ana Clara | NETPROJECT | 1961 | 1936 | 1936 |
| 43 | 4.36 | Campo Jul-26 | milestone | 0d | 2026-07-04 | 2026-07-08 | 42FS+25d |  |  | Ana Clara | NETPROJECT | 1964 | 1948 | 1948 |

| ID | WBS | Task | Type | Duration | Start | Finish | Predecessors | Complete | Constraint | Resources | Work | Text15 | Text19 | Number15 | Number20 |
| --- | --- | --- | --- | --- | --- | --- | --- | --- | --- | --- | --- | --- | --- | --- | --- |
| 44 | 5 | **RELATÓRIOS** |  | 0d | 2023-08-01 A | 2026-08-07 |  | 57% |  |  |  | NETPROJECT | 1960 | 397 | 397 |
| 45 | 5.1 | Relatório consolidado - jan/25 | milestone | 0d | 2025-02-03 | 2025-02-07 |  |  | start no earlier than 2025-02-03 | Ana Clara |  | NETPROJECT | 460 | 1829 | 1829 |
| 46 | 5.2 | Relatório de atividades | milestone | 0d | 2023-08-16 A | 2023-08-16 A | 8FS+3d | 100% |  | Ana Clara |  | NETPROJECT | 1970 | 370 | 370 |
| 47 | 5.3 | Relatório mensal Ago | milestone | 0d | 2023-08-28 A | 2023-08-28 A | 8FS+15d | 100% |  | Ana Clara |  | NETPROJECT | 1980 | 398 | 398 |
| 48 | 5.4 | Relatório consolidado | milestone | 0d | 2024-07-08 A | 2024-07-12 A |  | 100% | start no earlier than 2024-07-08 | Ana Clara |  | NETPROJECT | 1990 | 1407 | 1407 |
| 49 | 5.5 | Relatório de atividades set | milestone | 0d | 2023-09-19 A | 2023-09-19 A | 9FS+3d | 100% |  | Ana Clara |  | NETPROJECT | 2000 | 399 | 399 |
| 50 | 5.6 | Relatório mensal Set | milestone | 0d | 2023-10-01 A | 2023-10-01 A | 9FS+15d | 100% |  | Ana Clara |  | NETPROJECT | 2010 | 400 | 400 |
| 51 | 5.7 | Relatório de atividades | milestone | 0d | 2023-10-10 A | 2023-10-10 A | 10FS+3d | 100% |  | Ana Clara |  | NETPROJECT | 2020 | 401 | 401 |
| 52 | 5.8 | Relatório mensal Out | milestone | 0d | 2023-10-22 A | 2023-10-22 A | 10FS+15d | 100% |  | Ana Clara |  | NETPROJECT | 2030 | 402 | 402 |
| 53 | 5.9 | Relatório de atividades | milestone | 0d | 2023-11-14 A | 2023-11-14 A | 11FS+3d | 100% |  | Ana Clara |  | NETPROJECT | 2040 | 403 | 403 |
| 54 | 5.10 | Relatório mensal Nov | milestone | 0d | 2023-11-26 A | 2023-11-26 A | 11FS+15d | 100% |  | Ana Clara |  | NETPROJECT | 2050 | 404 | 404 |
| 55 | 5.11 | Relatório de atividades | milestone | 0d | 2023-12-11 A | 2023-12-11 A | 12FS+3d | 100% |  | Ana Clara |  | NETPROJECT | 2060 | 405 | 405 |
| 56 | 5.12 | Relatório mensal Dez | milestone | 0d | 2023-12-22 A | 2023-12-22 A | 12FS+15d | 100% |  | Ana Clara |  | NETPROJECT | 2070 | 406 | 406 |
| 57 | 5.13 | Relatório de atividades | milestone | 0d | 2024-01-15 A | 2024-01-15 A | 13FS+3d | 100% |  | Ana Clara |  | NETPROJECT | 2080 | 407 | 407 |
| 58 | 5.14 | Relatório mensal Jan | milestone | 0d | 2024-01-27 A | 2024-01-27 A | 13FS+15d | 100% |  | Ana Clara |  | NETPROJECT | 2090 | 408 | 408 |
| 59 | 5.15 | Relatório de atividades | milestone | 0d | 2024-03-08 A | 2024-03-08 A |  | 100% | must start on 2024-03-08 | Ana Clara |  | NETPROJECT | 2100 | 409 | 409 |
| 60 | 5.16 | Relatório mensal Fev | milestone | 0d | 2024-03-08 A | 2024-03-08 A |  | 100% | must start on 2024-03-08 | Ana Clara |  | NETPROJECT | 2110 | 410 | 410 |
| 61 | 5.17 | Relatório de atividades | milestone | 0d | 2024-04-02 A | 2024-04-02 A | 15FS+3d | 100% |  | Ana Clara |  | NETPROJECT | 2120 | 411 | 411 |
| 62 | 5.18 | Relatório mensal Mar | milestone | 0d | 2024-04-14 A | 2024-04-14 A | 15FS+15d | 100% |  | Ana Clara |  | NETPROJECT | 2130 | 412 | 412 |
| 63 | 5.19 | Relatório de atividades | milestone | 0d | 2024-04-26 A | 2024-04-26 A |  | 100% | must start on 2024-04-26 | Ana Clara |  | NETPROJECT | 2140 | 413 | 413 |
| 64 | 5.20 | Relatório mensal | milestone | 0d | 2024-04-26 A | 2024-04-26 A |  | 100% | must start on 2024-04-26 | Ana Clara |  | NETPROJECT | 2150 | 414 | 414 |
| 65 | 5.21 | Relatório de atividades | milestone | 0d | 2024-05-28 A | 2024-05-28 A | 17FS+3d | 100% |  | Ana Clara |  | NETPROJECT | 2160 | 415 | 415 |
| 66 | 5.22 | Relatório mensal | milestone | 0d | 2024-06-09 A | 2024-06-09 A | 17FS+15d | 100% |  | Ana Clara |  | NETPROJECT | 2170 | 416 | 416 |
| 67 | 5.23 | Relatório de atividades | milestone | 0d | 2024-06-25 A | 2024-06-25 A | 18FS+3d | 100% |  | Ana Clara |  | NETPROJECT | 2180 | 417 | 417 |
| 68 | 5.24 | Relatório mensal | milestone | 0d | 2024-07-07 A | 2024-07-07 A | 18FS+15d | 100% |  | Ana Clara |  | NETPROJECT | 2190 | 418 | 418 |
| 69 | 5.25 | Relatório de atividades | milestone | 0d | 2024-07-09 A | 2024-07-09 A | 19FS+3d | 100% |  | Ana Clara |  | NETPROJECT | 2200 | 419 | 419 |
| 70 | 5.26 | Relatório mensal | milestone | 0d | 2024-07-21 A | 2024-07-21 A | 19FS+15d | 100% |  | Ana Clara |  | NETPROJECT | 2210 | 420 | 420 |
| 71 | 5.27 | Relatório de atividades | milestone | 0d | 2023-08-09 A | 2023-08-09 A | 20FS+3d | 100% |  | Felipe Normando; Ana Clara | 64h | NETPROJECT | 2220 | 421 | 421 |
| 72 | 5.28 | Relatório mensal | milestone | 0d | 2023-08-21 A | 2023-08-21 A | 20FS+15d | 100% |  | Felipe Normando |  | NETPROJECT | 2230 | 422 | 422 |
| 73 | 5.29 | Relatório de atividades | milestone, inactive | 0d | 2024-09-17 A | 2024-09-17 A | 21FS+3d | 100% |  | Ana Clara |  | NETPROJECT | 2240 | 423 | 423 |
| 74 | 5.30 | Relatório mensal | milestone | 0d | 2024-09-29 A | 2024-09-29 A | 21FS+15d | 100% |  | Ana Clara |  | NETPROJECT | 2250 | 424 | 424 |
| 75 | 5.31 | Relatório de atividades | milestone | 0d | 2024-10-31 A | 2024-10-31 A | 22FS+3d | 100% |  | Ana Clara |  | NETPROJECT | 2260 | 425 | 425 |
| 76 | 5.32 | Relatório mensal | milestone | 0d | 2024-11-12 A | 2024-11-12 A | 22FS+15d | 100% |  | Ana Clara |  | NETPROJECT | 2270 | 426 | 426 |
| 77 | 5.33 | Relatório de atividades | milestone | 0d | 2024-12-03 A | 2024-12-03 A | 23FS+3d | 100% |  | Ana Clara |  | NETPROJECT | 2280 | 427 | 427 |
| 78 | 5.34 | Relatório mensal | milestone | 0d | 2024-12-15 A | 2024-12-15 A | 23FS+15d | 100% |  | Ana Clara |  | NETPROJECT | 2290 | 428 | 428 |
| 79 | 5.35 | Relatório de atividades | milestone | 0d | 2024-12-24 A | 2024-12-24 A | 24FS+3d | 100% |  | Ana Clara |  | NETPROJECT | 2300 | 429 | 429 |
| 80 | 5.36 | Relatório mensal | milestone | 0d | 2025-01-05 A | 2025-01-05 A | 24FS+15d | 100% |  | Ana Clara |  | NETPROJECT | 2310 | 430 | 430 |
| 81 | 5.37 | Relatório de atividades | milestone | 0d | 2025-01-14 A | 2025-01-14 A | 25FS+3d | 100% |  | Ana Clara |  | NETPROJECT | 2320 | 431 | 431 |
| 82 | 5.38 | Relatório mensal Jan/25 | milestone | 0d | 2025-01-26 A | 2025-01-26 A | 25FS+15d | 100% |  | Ana Clara |  | NETPROJECT | 2330 | 432 | 432 |
| 83 | 5.39 | Relatório de atividades | milestone | 0d | 2025-02-14 A | 2025-02-14 A | 26FS+3d | 100% | must start on 2025-02-14 | Ana Clara |  | NETPROJECT | 2340 | 433 | 433 |
| 84 | 5.40 | Relatório mensal Fev/25 | milestone | 0d | 2025-02-14 A | 2025-02-14 A | 26FS+15d | 100% | must start on 2025-02-14 | Ana Clara |  | NETPROJECT | 2350 | 434 | 434 |
| 85 | 5.41 | Relatório de atividades fev/25 | milestone | 0d | 2025-03-18 A | 2025-03-18 A | 27FS+3d | 100% |  | Ana Clara |  | NETPROJECT | 2360 | 435 | 435 |
| 86 | 5.42 | Relatório mensal Mar/25 | milestone | 0d | 2025-03-29 | 2025-03-29 | 27FS+15d |  |  | Ana Clara |  | NETPROJECT | 2370 | 436 | 436 |
| 87 | 5.43 | Relatório de atividades Mar/25 | milestone | 0d | 2025-04-15 | 2025-04-15 | 28FS+3d |  |  | Ana Clara |  | NETPROJECT | 2380 | 437 | 437 |
| 88 | 5.44 | Relatório mensal Abr/25 | milestone | 0d | 2025-04-27 | 2025-04-27 | 28FS+15d |  |  | Ana Clara |  | NETPROJECT | 2390 | 438 | 438 |
| 89 | 5.45 | Relatório de atividades Abr/25 | milestone | 0d | 2025-06-03 | 2025-06-03 | 29FS+3d |  |  | Ana Clara |  | NETPROJECT | 2400 | 439 | 439 |
| 90 | 5.46 | Relatório mensal Mai/25 | milestone | 0d | 2025-06-15 | 2025-06-15 | 29FS+15d |  |  | Ana Clara |  | NETPROJECT | 2410 | 440 | 440 |
| 91 | 5.47 | Relatório de atividades Mai/25 | milestone | 0d | 2025-06-24 | 2025-06-24 | 30FS+3d |  |  | Ana Clara |  | NETPROJECT | 2420 | 441 | 441 |
| 92 | 5.48 | Relatório mensal Jun/25 | milestone | 0d | 2023-08-01 | 2023-08-01 |  |  |  | Ana Clara |  | NETPROJECT | 2430 | 442 | 442 |
| 93 | 5.49 | Relatório - Consolidado -jul-25 (ictio) | milestone | 0d | 2025-07-14 | 2025-07-18 | 31FS+30d |  | must start on 2025-07-14 | Ana Clara |  | NETPROJECT | 2431 | 1862 | 1862 |
| 94 | 5.50 | Relatório mensal Ago-25 | milestone | 0d | 2025-09-10 | 2025-09-10 | 32FS+10d |  |  | Ana Clara |  | NETPROJECT | 2432 | 1937 | 1937 |
| 95 | 5.51 | Relatório mensal Set-25 | milestone | 0d | 2025-09-30 | 2025-09-30 | 33FS+10d |  |  | Ana Clara |  | NETPROJECT | 2433 | 1938 | 1938 |
| 96 | 5.52 | Relatório mensal Out-25 | milestone | 0d | 2025-10-28 | 2025-10-28 | 34FS+10d |  |  | Ana Clara |  | NETPROJECT | 2434 | 1939 | 1939 |
| 97 | 5.53 | Relatório mensal Nov-25 | milestone | 0d | 2025-12-10 | 2025-12-10 | 35FS+10d |  |  | Ana Clara |  | NETPROJECT | 2435 | 1940 | 1940 |
| 98 | 5.54 | Relatório mensal Dez-25 | milestone | 0d | 2025-12-31 | 2025-12-31 | 36FS+10d |  |  | Ana Clara |  | NETPROJECT | 2436 | 1941 | 1941 |
| 99 | 5.55 | Relatório mensal Jan-26 | milestone | 0d | 2026-01-27 | 2026-01-27 | 37FS+10d |  |  | Ana Clara |  | NETPROJECT | 2437 | 1942 | 1942 |
| 100 | 5.56 | Relatório mensal Fev-26 | milestone | 0d | 2026-02-17 | 2026-02-17 | 38FS+10d |  |  | Ana Clara |  | NETPROJECT | 2438 | 1943 | 1943 |
| 101 | 5.57 | Relatório mensal Mar-26 | milestone | 0d | 2026-03-19 | 2026-03-19 | 39FS+10d |  |  | Ana Clara |  | NETPROJECT | 2439 | 1944 | 1944 |
| 102 | 5.58 | Relatório mensal Abr-26 | milestone | 0d | 2026-04-18 | 2026-04-18 | 40FS+10d |  |  | Ana Clara |  | NETPROJECT | 2440 | 1945 | 1945 |
| 103 | 5.59 | Relatório mensal Mai-26 | milestone | 0d | 2026-05-20 | 2026-05-20 | 41FS+10d |  |  | Ana Clara |  | NETPROJECT | 2441 | 1946 | 1946 |
| 104 | 5.60 | Relatório mensal Jun-26 | milestone | 0d | 2026-06-19 | 2026-06-19 | 42FS+10d |  |  | Ana Clara |  | NETPROJECT | 2442 | 1947 | 1947 |
| 105 | 5.61 | Relatório - Consolidado -jul-256(ictio) | milestone | 0d | 2026-08-03 | 2026-08-07 | 43FS+25d |  |  | Ana Clara |  | NETPROJECT | 2443 | 1950 | 1950 |
