# GEOHER001 - Monit. Ictiofauna - Herculano - Geomil

Schedule from MS Project XML, 2023-05-08 to 2026-11-11, A marks actual dates.

## Calendars

- Standard: Mon-Fri 08:00-12:00, 13:00-17:00; Sat-Sun off.

## Resources

| Resource |
| --- |
| Gestão de Projetos |
| Ana Clara |
| Felipe Normando |
| Wilder Bento |
| Ismayllen Masson |
| Yuri Martins |

## Schedule

| ID | WBS | Task | Type | Duration | Start | Finish | Predecessors | Complete | Constraint | Resources | Work | Text15 | Text19 | Number15 | Number20 |
| --- | --- | --- | --- | --- | --- | --- | --- | --- | --- | --- | --- | --- | --- | --- | --- |
| 1 | 1 | Autorização Projeto | milestone | 0d | 2023-05-08 A | 2023-05-08 A |  | 100% |  | Gestão de Projetos |  | NETPROJECT | 530 | 97 | 97 |
| 2 | 2 | **Campo** |  | 0d | 2023-05-15 A | 2026-11-11 |  | 50% |  |  |  | NETPROJECT | 540 | 100 | 100 |
| 3 | 2.1 | Campo Maio | milestone | 0d | 2023-05-15 A | 2023-05-20 A | 1FS+6d | 100% |  | Gestão de Projetos; Ana Clara | 768h | NETPROJECT | 550 | 98 | 98 |
| 4 | 2.2 | Campo Agosto | milestone | 0d | 2023-08-14 A | 2023-08-18 A | 3FS+85d | 100% |  | Gestão de Projetos; Ana Clara | 704h | NETPROJECT | 560 | 101 | 101 |
| 5 | 2.3 | Campo Novembro | milestone | 0d | 2023-11-12 A | 2023-11-16 A | 4FS+85d | 100% |  | Gestão de Projetos; Ana Clara | 704h | NETPROJECT | 570 | 102 | 102 |
| 6 | 2.4 | Campo fev-24 | milestone | 0d | 2024-02-22 A | 2024-02-26 A | 3 | 100% | must start on 2024-02-22 | Felipe Normando; Ana Clara | 384h | NETPROJECT | 580 | 985 | 985 |
| 7 | 2.5 | Campo maio-24 | milestone | 0d | 2024-05-01 A | 2024-05-06 A |  | 100% | must start on 2024-05-01 | Felipe Normando; Ana Clara | 357.33h | NETPROJECT | 590 | 986 | 986 |
| 8 | 2.6 | Campo ago-24 | milestone | 0d | 2024-08-14 A | 2024-08-16 A |  | 100% | must start on 2024-08-14 | Felipe Normando; Ana Clara | 384h | NETPROJECT | 600 | 987 | 987 |
| 9 | 2.7 | Campo nov-24 | milestone | 0d | 2024-11-04 | 2024-11-06 |  |  | must start on 2024-11-04 | Yuri Martins |  | NETPROJECT | 610 | 988 | 988 |
| 10 | 2.8 | Campo fev-25 | milestone | 0d | 2025-02-25 | 2025-02-27 |  |  | start no earlier than 2025-02-25 | Ana Clara |  | NETPROJECT | 611 | 1778 | 1778 |
| 11 | 2.9 | Campo mai-25 | milestone | 0d | 2025-05-08 | 2025-05-12 |  |  | must start on 2025-05-08 | Yuri Martins |  | NETPROJECT | 612 | 1779 | 1779 |
| 12 | 2.10 | Campo ago-25 | milestone | 0d | 2025-08-04 | 2025-08-06 |  |  | must start on 2025-08-04 | Ana Clara |  | NETPROJECT | 613 | 1780 | 1780 |
| 13 | 2.11 | Campo nov-25 | milestone | 0d | 2025-11-04 | 2025-11-06 |  |  | must start on 2025-11-04 | Ana Clara |  | NETPROJECT | 614 | 1781 | 1781 |
| 14 | 2.12 | Campo - 37 campanha | milestone | 0d | 2026-02-23 | 2026-02-25 |  |  | must start on 2026-02-23 | Ana Clara |  | NETPROJECT | 615 | 2115 | 2115 |
| 15 | 2.13 | Campo - 38 campanha | milestone | 0d | 2026-05-04 | 2026-05-06 |  |  | must start on 2026-05-04 | Gestão de Projetos |  | NETPROJECT | 616 | 2116 | 2116 |
| 16 | 2.14 | Campo - 39 campanha | milestone | 0d | 2026-08-03 | 2026-08-05 |  |  | must start on 2026-08-03 | Gestão de Projetos |  | NETPROJECT | 617 | 2117 | 2117 |
| 17 | 2.15 | Campo - 40 campanha | milestone | 0d | 2026-11-09 | 2026-11-11 |  |  | must start on 2026-11-09 | Gestão de Projetos |  | NETPROJECT | 618 | 2118 | 2118 |
| 18 | 3 | **Relatório** |  | 0d | 2023-05-31 A | 2025-12-10 |  | 76% |  |  |  | NETPROJECT | 620 | 103 | 103 |
| 19 | 3.1 | Relatório Novembro- Bentos | milestone | 0d | 2023-11-27 A | 2023-12-01 A | 21SS | 100% |  | Gestão de Projetos |  | NETPROJECT | 200 | 288 | 288 |
| 20 | 3.2 | Relatório de agosto - Bentos | milestone | 0d | 2024-09-16 | 2024-09-18 |  |  | start no earlier than 2024-09-16 | Gestão de Projetos |  | NETPROJECT | 210 | 1703 | 1703 |
| 21 | 3.3 | Relatório Novembro - Ictio | milestone | 0d | 2023-11-27 A | 2023-12-01 A | 5FS+8d | 100% |  | Gestão de Projetos |  | NETPROJECT | 210 | 105 | 105 |
| 22 | 3.4 | Relatório Agosto - Ictio | milestone | 0d | 2023-09-18 A | 2023-09-20 A | 4FS+28d | 100% |  | Gestão de Projetos; Ana Clara | 384h | NETPROJECT | 220 | 104 | 104 |
| 23 | 3.5 | Relatório de agosto - Bentos | milestone | 0d | 2024-09-06 A | 2024-09-10 A | 8FS+20d | 100% |  | Ana Clara; Felipe Normando | 384h | NETPROJECT | 220 | 993 | 993 |
| 24 | 3.6 | Relatório de novembro - Bentos | milestone | 0d | 2024-11-27 A | 2024-11-29 A | 9FS+20d | 100% |  | Ismayllen Masson; Felipe Normando | 384h | NETPROJECT | 230 | 995 | 995 |
| 25 | 3.7 | Relatório Agosto - Bentos | milestone | 0d | 2023-09-28 A | 2023-09-28 A | 4FS+40d | 100% |  | Gestão de Projetos; Ana Clara | 128h | NETPROJECT | 230 | 287 | 287 |
| 26 | 3.8 | Relatório de fevereiro - Ictio | milestone | 0d | 2024-04-22 A | 2024-04-24 A | 6FS+20d | 100% | must start on 2024-04-22 | Felipe Normando; Ana Clara | 384h | NETPROJECT | 240 | 984 | 984 |
| 27 | 3.9 | Relatório de novembro - Ictio | milestone | 0d | 2024-11-18 A | 2024-11-20 A | 9FS+20d | 100% | must start on 2024-11-18 | Ismayllen Masson |  | NETPROJECT | 240 | 994 | 994 |
| 28 | 3.10 | Relatório de fevereiro - Bentos | milestone | 0d | 2024-03-25 A | 2024-03-27 A | 6FS+20d | 100% | must start on 2024-03-25 | Felipe Normando |  | NETPROJECT | 250 | 989 | 989 |
| 29 | 3.11 | Relatório de maio - Ictio | milestone | 0d | 2024-05-27 A | 2024-05-29 A | 7FS+20d | 100% |  | Felipe Normando; Ana Clara | 384h | NETPROJECT | 260 | 990 | 990 |
| 30 | 3.12 | Relatório Maio - Bentos | milestone | 0d | 2023-05-31 A | 2023-06-02 A | 33SS | 100% |  | Gestão de Projetos; Ana Clara | 384h | NETPROJECT | 260 | 286 | 286 |
| 31 | 3.13 | Relatório de maio - Bentos | milestone | 0d | 2024-05-27 A | 2024-05-29 A | 7FS+20d | 100% |  | Felipe Normando; Ismayllen Masson | 384h | NETPROJECT | 270 | 991 | 991 |
| 32 | 3.14 | Relatório de agosto - Ictio | milestone | 0d | 2024-09-06 A | 2024-09-10 A | 8FS+20d | 100% |  | Ana Clara |  | NETPROJECT | 270 | 992 | 992 |
| 33 | 3.15 | Relatório Maio - Ictio | milestone | 0d | 2023-05-31 A | 2023-06-02 A | 3FS+10d | 100% |  | Gestão de Projetos; Ana Clara | 384h | NETPROJECT | 280 | 99 | 99 |
| 34 | 3.16 | Relatório Ictio - fev -25 | milestone | 0d | 2025-03-31 A | 2025-03-31 A | 10FS+20d | 100% | must start on 2025-03-31 | Felipe Normando |  | NETPROJECT | 290 | 1782 | 1782 |
| 35 | 3.17 | Relatório Bentos - fev -25 | milestone | 0d | 2025-03-28 | 2025-03-28 | 10FS+20d |  |  | Ana Clara |  | NETPROJECT | 300 | 1783 | 1783 |
| 36 | 3.18 | Relatório Ictio - mai -25 | milestone | 0d | 2025-06-04 | 2025-06-04 | 11FS+20d |  | must start on 2025-06-04 | Ana Clara |  | NETPROJECT | 310 | 1784 | 1784 |
| 37 | 3.19 | Relatório Bentos - mai -25 | milestone | 0d | 2025-06-09 | 2025-06-09 | 11FS+20d |  | must start on 2025-06-09 | Ana Clara |  | NETPROJECT | 320 | 1785 | 1785 |
| 38 | 3.20 | Relatório Ictio - ago -25 | milestone | 0d | 2025-09-05 | 2025-09-05 | 12FS+20d |  |  | Ana Clara |  | NETPROJECT | 330 | 1786 | 1786 |
| 39 | 3.21 | Relatório Bentos - ago -25 | milestone | 0d | 2025-09-05 | 2025-09-05 | 12FS+20d |  |  | Ana Clara |  | NETPROJECT | 340 | 1787 | 1787 |
| 40 | 3.22 | Relatório Ictio - nov -25 | milestone | 0d | 2025-12-05 | 2025-12-10 | 13FS+20d |  |  | Ana Clara |  | NETPROJECT | 350 | 1788 | 1788 |
| 41 | 3.23 | Relatório Bento- nov -25 | milestone | 0d | 2025-12-05 | 2025-12-10 | 13FS+20d |  |  | Ana Clara |  | NETPROJECT | 360 | 1789 | 1789 |
