# MICBAG001 - Monitoramento da Ictiofauna da UHE Baguari

Schedule from MS Project XML, 2022-04-19 to 2026-11-13, A marks actual dates.

## Calendars

- Standard: Mon-Fri 08:00-12:00, 13:00-17:00; Sat-Sun off.

## Resources

| Resource |
| --- |
| Gestão de Projetos |
| Ismayllen Masson |
| Wilder Bento |
| Felipe Normando |
| Ana Clara |

## Schedule

| ID | WBS | Task | Type | Duration | Start | Finish | Predecessors | Complete | Constraint | Resources | Work | Text15 | Text19 | Number15 | Number20 |
| --- | --- | --- | --- | --- | --- | --- | --- | --- | --- | --- | --- | --- | --- | --- | --- |
| 1 | 1 | **Campanhas de campo** |  | 0d | 2022-04-19 A | 2026-10-13 |  | 80% |  |  |  | NETPROJECT | 1320 | 617 | 617 |
| 2 | 1.1 | Campo 01 - maio - Área de Influência | milestone | 0d | 2022-04-19 A | 2022-04-26 A |  | 100% |  | Ismayllen Masson |  | NETPROJECT | 1330 | 618 | 618 |
| 3 | 1.2 | Campo 02 - jul - Área de Influência | milestone | 0d | 2022-05-27 A | 2022-06-03 A | 2FS+30d | 100% |  | Ismayllen Masson |  | NETPROJECT | 1340 | 619 | 619 |
| 4 | 1.3 | Campo 03 - out STP | milestone | 0d | 2023-10-09 A | 2023-10-11 A |  | 100% | start no earlier than 2023-10-09 | Ismayllen Masson |  | NETPROJECT | 1350 | 881 | 881 |
| 5 | 1.4 | Campo 03 - out - Área de Influência | milestone | 0d | 2023-10-25 A | 2023-11-01 A |  | 100% | must start on 2023-10-25 | Ismayllen Masson; Wilder Bento | 896h | NETPROJECT | 1360 | 620 | 620 |
| 6 | 1.5 | Campo 04 - nov - STP | milestone | 0d | 2023-11-06 A | 2023-11-08 A |  | 100% | must start on 2023-11-06 | Ismayllen Masson |  | NETPROJECT | 1370 | 621 | 621 |
| 7 | 1.6 | Campo 05 - nov - STP | milestone | 0d | 2023-11-20 A | 2023-11-22 A |  | 100% | must start on 2023-11-20 | Ismayllen Masson |  | NETPROJECT | 1380 | 636 | 636 |
| 8 | 1.7 | Campo 06- dez - STP | milestone | 0d | 2023-12-04 A | 2023-12-12 A |  | 100% | must start on 2023-12-04 | Ismayllen Masson |  | NETPROJECT | 1390 | 622 | 622 |
| 9 | 1.8 | Campo 07 - dez - STP | milestone | 0d | 2023-12-18 A | 2023-12-20 A |  | 100% | must start on 2023-12-18 | Ismayllen Masson |  | NETPROJECT | 1400 | 638 | 638 |
| 10 | 1.9 | Campo 08- jan - STP | milestone | 0d | 2024-01-03 A | 2024-01-05 A |  | 100% | must start on 2024-01-03 | Ismayllen Masson |  | NETPROJECT | 1410 | 623 | 623 |
| 11 | 1.10 | Campo 09 -Área de Influência + STP | milestone | 0d | 2024-01-22 A | 2024-02-02 A |  | 100% | must start on 2024-01-22 | Ismayllen Masson |  | NETPROJECT | 1420 | 637 | 637 |
| 12 | 1.11 | Campo 10 - fev - STP | milestone | 0d | 2024-02-05 A | 2024-02-07 A |  | 100% | must start on 2024-02-05 | Ismayllen Masson |  | NETPROJECT | 1430 | 624 | 624 |
| 13 | 1.12 | Campo 11 - fev - STP | milestone | 0d | 2024-02-19 A | 2024-02-21 A |  | 100% | must start on 2024-02-19 | Ismayllen Masson |  | NETPROJECT | 1440 | 639 | 639 |
| 14 | 1.13 | Campo 12 - mar - STP | milestone | 0d | 2024-03-25 A | 2024-03-27 A |  | 100% | must start on 2024-03-25 | Ismayllen Masson |  | NETPROJECT | 1450 | 627 | 627 |
| 15 | 1.14 | Campo 13 - abr - Área de influência | milestone | 0d | 2024-04-08 A | 2024-04-15 A |  | 100% | must start on 2024-04-08 | Ismayllen Masson; Wilder Bento | 1024h | NETPROJECT | 1460 | 902 | 902 |
| 16 | 1.15 | Campo 14 - jul - Área de influência | milestone | 0d | 2024-07-01 A | 2024-07-08 A |  | 100% | must start on 2024-07-01 | Ismayllen Masson; Wilder Bento | 1024h | NETPROJECT | 1470 | 1029 | 1029 |
| 17 | 1.16 | Campo 15 - out - Área de influência | milestone | 0d | 2024-10-09 A | 2024-10-17 A |  | 100% | must start on 2024-10-09 | Ismayllen Masson |  | NETPROJECT | 1480 | 1030 | 1030 |
| 18 | 1.17 | Campo 16 - Jan-25 - Área de influência | milestone | 0d | 2025-01-23 A | 2025-01-30 A |  | 100% | must start on 2025-01-23 | Ismayllen Masson |  | NETPROJECT | 1481 | 1774 | 1774 |
| 19 | 1.18 | Campo 16 - mar-25 - Área de influência | milestone | 0d | 2025-04-16 A | 2025-04-24 A |  | 100% | must start on 2025-04-16 | Wilder Bento |  | NETPROJECT | 1482 | 1841 | 1841 |
| 20 | 1.19 | Campo 17 - julho-25 Área de influência | milestone | 0d | 2025-07-21 A | 2025-07-29 A |  | 100% | start no earlier than 2025-07-21 | Ismayllen Masson |  | NETPROJECT | 1483 | 1913 | 1913 |
| 21 | 1.20 | Campo 18 - Área de influência | milestone | 0d | 2025-10-20 A | 2025-10-27 A |  | 100% | start no earlier than 2025-10-20 | Wilder Bento |  | NETPROJECT | 1484 | 1997 | 1997 |
| 22 | 1.21 | Campo 19 - jan-26- Área de influência | milestone | 0d | 2026-01-26 | 2026-02-02 |  |  | start no earlier than 2026-01-26 | Wilder Bento |  | NETPROJECT | 1485 | 2094 | 2094 |
| 23 | 1.22 | Campo 20 - mar-26- Área de influência | milestone | 0d | 2026-03-09 | 2026-03-17 |  |  | start no earlier than 2026-03-09 | Wilder Bento |  | NETPROJECT | 1486 | 2095 | 2095 |
| 24 | 1.23 | Campo 21 - julho-26-Área de Influência | milestone | 0d | 2026-07-06 | 2026-07-13 |  |  | start no earlier than 2026-07-06 | Wilder Bento |  | NETPROJECT | 1487 | 2096 | 2096 |
| 25 | 1.24 | Campo 22 - outu-26- Área de influência | milestone | 0d | 2026-10-05 | 2026-10-13 |  |  | start no earlier than 2026-10-05 | Wilder Bento |  | NETPROJECT | 1488 | 2097 | 2097 |

| ID | WBS | Task | Type | Duration | Start | Finish | Predecessors | Complete | Constraint | Resources | Work | Text15 | Text19 | Number15 | Number20 |
| --- | --- | --- | --- | --- | --- | --- | --- | --- | --- | --- | --- | --- | --- | --- | --- |
| 26 | 2 | **Relatórios** |  | 0d | 2022-05-12 A | 2026-11-13 |  | 77% |  |  |  | NETPROJECT | 1490 | 625 | 625 |
| 27 | 2.1 | Relatório 01 - Parcial - AI | milestone | 0d | 2022-05-12 A | 2022-05-13 A | 2FS+15d | 100% |  | Ismayllen Masson |  | NETPROJECT | 1500 | 628 | 628 |
| 28 | 2.2 | Relatório 02 - Parcial - jul - AI | milestone | 0d | 2022-06-19 A | 2022-06-20 A | 3FS+15d | 100% |  | Ismayllen Masson |  | NETPROJECT | 1510 | 629 | 629 |
| 29 | 2.3 | Relatório 03 - Consolidado - out - AI | milestone | 0d | 2023-11-25 A | 2023-11-28 A | 5FS+20d | 100% | must start on 2023-11-25 | Ismayllen Masson |  | NETPROJECT | 1520 | 630 | 630 |
| 30 | 2.4 | Relatório 04 - Parcial - nov - STP | milestone | 0d | 2023-11-24 A | 2023-11-25 A | 6FS+15d | 100% |  | Ismayllen Masson |  | NETPROJECT | 1530 | 631 | 631 |
| 31 | 2.5 | Relatório 05 - Parcial - nov - STP | milestone | 0d | 2023-12-09 A | 2023-12-10 A | 7FS+15d | 100% |  | Ismayllen Masson |  | NETPROJECT | 1540 | 641 | 641 |
| 32 | 2.6 | Relatório 06 - Parcial - dez - STP | milestone | 0d | 2023-12-28 A | 2023-12-29 A | 8FS+15d | 100% |  | Ismayllen Masson |  | NETPROJECT | 1550 | 632 | 632 |
| 33 | 2.7 | Relatório 07 - Parcial - dez - STP | milestone | 0d | 2024-01-05 A | 2024-01-06 A | 9FS+15d | 100% |  | Ismayllen Masson |  | NETPROJECT | 1560 | 640 | 640 |
| 34 | 2.8 | Relatório 08 - Parcial - jan - STP | milestone | 0d | 2024-02-06 A | 2024-02-07 A | 10FS+15d | 100% | must start on 2024-02-06 | Ismayllen Masson |  | NETPROJECT | 1570 | 633 | 633 |
| 35 | 2.9 | Relatório 09 - Parcial - jan - AI + STP | milestone | 0d | 2024-02-06 A | 2024-02-07 A | 11FS+15d | 100% | must start on 2024-02-06 | Ismayllen Masson |  | NETPROJECT | 1580 | 643 | 643 |
| 36 | 2.10 | Relatório 11 - Parcial - fev - STP | milestone | 0d | 2024-03-11 A | 2024-03-12 A |  | 100% | must start on 2024-03-11 | Ismayllen Masson; Ana Clara | 256h | NETPROJECT | 1590 | 642 | 642 |
| 37 | 2.11 | Relatório 12 - Parcial - mar - STP | milestone | 0d | 2024-04-12 A | 2024-04-13 A | 14FS+15d | 100% |  | Ismayllen Masson; Ana Clara | 256h | NETPROJECT | 1600 | 635 | 635 |
| 38 | 2.12 | Relatório 13 - Parcial - abr AI | milestone | 0d | 2024-04-29 A | 2024-04-29 A |  | 100% | must start on 2024-04-29 | Ismayllen Masson; Ana Clara | 128h | NETPROJECT | 1610 | 1033 | 1033 |
| 39 | 2.13 | Relatório 14 - Parcial - jul - AI | milestone | 0d | 2024-07-24 A | 2024-07-24 A | 16FS+15d | 100% |  | Ismayllen Masson |  | NETPROJECT | 1620 | 1031 | 1031 |
| 40 | 2.14 | Relatório 15 -Consolidado | milestone | 0d | 2024-10-28 A | 2024-11-01 A |  | 100% | must start on 2024-10-28 | Ismayllen Masson |  | NETPROJECT | 1630 | 1032 | 1032 |
| 41 | 2.15 | Relatório 16 - Parcial - Out | milestone | 0d | 2024-12-06 A | 2024-12-07 A |  | 100% | start no earlier than 2024-12-06 | Felipe Normando |  | NETPROJECT | 1631 | 1772 | 1772 |
| 42 | 2.16 | Relatório 17 - Parcial - Nov | milestone | 0d | 2024-12-06 A | 2024-12-07 A |  | 100% | start no earlier than 2024-12-06 | Ismayllen Masson |  | NETPROJECT | 1632 | 1773 | 1773 |
| 43 | 2.17 | Relatório 18 - Parcial - dez | milestone | 0d | 2025-01-17 A | 2025-01-17 A |  | 100% | must start on 2025-01-17 | Felipe Normando |  | NETPROJECT | 1633 | 1821 | 1821 |
| 44 | 2.18 | Relatório 19- Parcial - jan | milestone | 0d | 2025-02-14 A | 2025-02-14 A |  | 100% | must start on 2025-02-14 | Ismayllen Masson |  | NETPROJECT | 1634 | 1822 | 1822 |
| 45 | 2.19 | Relatório 20 - Parcial - fev | milestone | 0d | 2025-03-22 A | 2025-03-22 A |  | 100% | must start on 2025-03-22 | Ismayllen Masson |  | NETPROJECT | 1635 | 1823 | 1823 |
| 46 | 2.20 | Relatório 21 - Parcial - mar | milestone | 0d | 2025-04-22 A | 2025-04-22 A |  | 100% | must start on 2025-04-22 | Ismayllen Masson; Felipe Normando | 64h | NETPROJECT | 1636 | 1824 | 1824 |
| 47 | 2.21 | Relatório 22 - Parcial - out | milestone | 0d | 2025-10-29 A | 2025-10-30 A |  | 100% | start no earlier than 2025-10-29 | Wilder Bento |  | NETPROJECT | 1637 | 1998 | 1998 |
| 48 | 2.22 | Relatório - Parcial - AI - jan-26 | milestone | 0d | 2026-02-18 | 2026-02-18 | 22FS+5d |  | start no earlier than 2026-02-18 | Wilder Bento |  | NETPROJECT | 1638 | 2098 | 2098 |
| 49 | 2.23 | Relatório - STP - Dez-25 | milestone | 0d | 2026-01-05 | 2026-01-05 |  |  | start no earlier than 2026-01-05 | Wilder Bento |  | NETPROJECT | 1639 | 2099 | 2099 |
| 50 | 2.24 | Relatório - STP - Jan-26 | milestone | 0d | 2026-02-02 | 2026-02-02 |  |  | start no earlier than 2026-02-02 | Wilder Bento |  | NETPROJECT | 1640 | 2100 | 2100 |
| 51 | 2.25 | Relatório - STP - fev-26 | milestone | 0d | 2026-03-02 | 2026-03-02 |  |  | start no earlier than 2026-03-02 | Wilder Bento |  | NETPROJECT | 1641 | 2101 | 2101 |
| 52 | 2.26 | Relatório - Parcial - AI - mar-26 | milestone | 0d | 2026-03-22 | 2026-03-22 | 23FS+5d |  |  | Wilder Bento |  | NETPROJECT | 1642 | 2102 | 2102 |
| 53 | 2.27 | Relatório - STP - mar-26 | milestone | 0d | 2026-02-17 | 2026-02-17 |  |  | start no earlier than 2026-02-17 | Wilder Bento |  | NETPROJECT | 1643 | 2103 | 2103 |
| 54 | 2.28 | Relatório - Parcial - AI - jul-26 | milestone | 0d | 2026-07-19 | 2026-07-19 | 24FS+5d |  |  | Wilder Bento |  | NETPROJECT | 1644 | 2104 | 2104 |
| 55 | 2.29 | Relatório - Consolidado STP+AI -out-26 | milestone | 0d | 2026-11-09 | 2026-11-13 | 25FS+25d |  |  | Wilder Bento |  | NETPROJECT | 1645 | 2105 | 2105 |
