# TERAIM001 - Monitoramento da ictiofauna - UHE Aimorés

Schedule from MS Project XML, 2025-05-22 to 2026-06-02, A marks actual dates.

## Calendars

- Standard: Mon-Fri 08:00-12:00, 13:00-17:00; Sat-Sun off.

## Resources

| Resource |
| --- |
| Ana Clara |
| Felipe Normando |
| Ismayllen Masson |
| Wilder Bento |
| Yuri Martins |

## Schedule

| ID | WBS | Task | Type | Duration | Start | Finish | Predecessors | Complete | Constraint | Resources | Text15 | Text19 | Number15 | Number20 |
| --- | --- | --- | --- | --- | --- | --- | --- | --- | --- | --- | --- | --- | --- | --- |
| 1 | 1 | **INICIAÇÃO** |  | 0d | 2025-05-22 A | 2025-05-23 A |  | 100% |  |  | NETPROJECT | 1 | 1864 | 1864 |
| 2 | 1.1 | Reunião de Kick-off | milestone | 0d | 2025-05-22 A | 2025-05-23 A |  | 100% |  | Felipe Normando | NETPROJECT | 100 | 1865 | 1865 |
| 3 | 1.2 | Start do Projeto | milestone | 0d | 2025-05-22 A | 2025-05-23 A |  | 100% |  | Felipe Normando | NETPROJECT | 110 | 1866 | 1866 |
| 4 | 2 | **PLANEJAMENTO** |  | 0d | 2025-05-22 A | 2025-06-08 A |  | 100% |  |  | NETPROJECT | 30 | 1867 | 1867 |
| 5 | 2.1 | Treinamento | milestone | 0d | 2025-06-07 A | 2025-06-08 A | 2FS+15d | 100% |  | Felipe Normando | NETPROJECT | 40 | 1868 | 1868 |
| 6 | 2.2 | Preenchimento do formulário Opyta | milestone | 0d | 2025-05-22 A | 2025-05-23 A |  | 100% |  | Felipe Normando | NETPROJECT | 50 | 1869 | 1869 |
| 7 | 3 | **CAMPO** |  | 0d | 2025-06-25 A | 2026-04-06 |  | 18% |  |  | NETPROJECT | 60 | 1870 | 1870 |
| 8 | 3.1 | Campanha 01 - Ictio e STP | milestone | 0d | 2025-06-25 A | 2025-07-06 A |  | 100% | must start on 2025-06-25 | Felipe Normando | NETPROJECT | 40 | 1877 | 1877 |
| 9 | 3.2 | Campanha 02 - Ictio e STP | milestone | 0d | 2025-09-22 | 2025-10-07 | 8FS+80d |  | must start on 2025-09-22 | Ismayllen Masson | NETPROJECT | 41 | 1878 | 1878 |
| 10 | 3.3 | Campanha 03 - STP | milestone | 0d | 2025-11-26 | 2025-11-30 |  |  | must start on 2025-11-26 | Ismayllen Masson | NETPROJECT | 42 | 1879 | 1879 |
| 11 | 3.4 | Campanha 04 - Ictio e STP | milestone | 0d | 2025-12-01 | 2025-12-14 |  |  | must start on 2025-12-01 | Ismayllen Masson | NETPROJECT | 110 | 1882 | 1882 |
| 12 | 3.5 | Campanha 05 - STP | milestone | 0d | 2026-01-22 | 2026-01-29 |  |  | must start on 2026-01-22 | Ismayllen Masson | NETPROJECT | 120 | 1881 | 1881 |
| 13 | 3.6 | Campanha 06 - STP | milestone | 0d | 2026-02-19 | 2026-02-26 |  |  | must start on 2026-02-19 | Ismayllen Masson | NETPROJECT | 130 | 1999 | 1999 |
| 14 | 3.7 | Campanha 07 -Ictio e STP | milestone | 0d | 2026-03-19 | 2026-04-06 | 11FS+20d |  | must start on 2026-03-19 | Ismayllen Masson | NETPROJECT | 140 | 1883 | 1883 |
| 15 | 4 | **RELATÓRIOS** |  | 0d | 2025-05-22 A | 2026-06-02 |  | 34% |  |  | NETPROJECT | 90 | 1873 | 1873 |
| 16 | 4.1 | Relatório de atividade campo 01 | milestone | 0d | 2025-07-22 A | 2025-07-25 A | 8FS+15d | 100% |  | Felipe Normando | NETPROJECT | 100 | 1874 | 1874 |
| 17 | 4.2 | Relatório de atividade campo 02 | milestone | 0d | 2025-10-06 A | 2025-10-09 A | 9FS+15d | 100% | must start on 2025-10-06 | Ismayllen Masson | NETPROJECT | 110 | 1875 | 1875 |
| 18 | 4.3 | Relatório de atividade campo 03 | milestone | 0d | 2025-12-17 | 2025-12-20 | 10FS+15d |  |  | Felipe Normando | NETPROJECT | 170 | 1884 | 1884 |
| 19 | 4.4 | Relatório de atividade campo 04 | milestone | 0d | 2025-05-22 A | 2025-05-25 A |  | 100% |  | Felipe Normando | NETPROJECT | 180 | 1887 | 1887 |
| 20 | 4.5 | Relatório de atividade campo 05 | milestone | 0d | 2026-02-14 | 2026-02-17 | 12FS+15d |  |  | Felipe Normando | NETPROJECT | 190 | 1888 | 1888 |
| 21 | 4.6 | Relatório de atividade campo 06 | milestone | 0d | 2025-12-31 | 2026-01-04 | 11FS+15d |  |  | Felipe Normando | NETPROJECT | 200 | 1889 | 1889 |
| 22 | 4.7 | Relatório Consolidado | milestone | 0d | 2026-05-24 | 2026-06-02 | 14FS+45d |  |  | Felipe Normando | NETPROJECT | 210 | 1876 | 1876 |
