# VIVGUA02 - Monitoramento da Ictiofauna - PCHs Guanhães

Schedule from MS Project XML, 2023-08-01 to 2026-09-10, A marks actual dates.

## Calendars

- Standard: Mon-Fri 08:00-12:00, 13:00-17:00; Sat-Sun off.

## Resources

| Resource |
| --- |
| Ana Clara |
| Felipe Normando |
| Wilder Bento |
| Ismayllen Masson |
| Yuri Martins |

## Schedule

| ID | WBS | Task | Type | Duration | Start | Finish | Predecessors | Complete | Constraint | Resources | Work | Text15 | Text19 | Number15 | Number20 |
| --- | --- | --- | --- | --- | --- | --- | --- | --- | --- | --- | --- | --- | --- | --- | --- |
| 1 | 1 | **INICIAÇÃO** |  | 0d | 2023-08-01 A | 2023-08-01 A |  | 100% |  |  |  | NETPROJECT | 2690 | 646 | 646 |
| 2 | 1.1 | Reunião de Kick-off | milestone | 0d | 2023-08-01 A | 2023-08-01 A |  | 100% |  | Ana Clara |  | NETPROJECT | 2700 | 647 | 647 |
| 3 | 1.2 | Start do Projeto | milestone | 0d | 2023-08-01 A | 2023-08-01 A |  | 100% |  | Ana Clara |  | NETPROJECT | 2710 | 648 | 648 |
| 4 | 2 | **PLANEJAMENTO** |  | 0d | 2023-08-02 A | 2023-08-12 A |  | 100% |  |  |  | NETPROJECT | 2720 | 649 | 649 |
| 5 | 2.1 | Mobilização | milestone | 0d | 2023-08-02 A | 2023-08-11 A | 2 | 100% |  | Ana Clara |  | NETPROJECT | 2730 | 650 | 650 |
| 6 | 2.2 | Preenchimento do formulário Opyta | milestone | 0d | 2023-08-12 A | 2023-08-12 A | 5 | 100% |  | Ana Clara |  | NETPROJECT | 2740 | 651 | 651 |
| 7 | 3 | **CAMPO** |  | 0d | 2023-08-15 A | 2026-08-08 |  | 51% |  |  |  | NETPROJECT | 2750 | 652 | 652 |
| 8 | 3.1 | Campanha 01 - ago/23 | milestone | 0d | 2023-08-15 A | 2023-08-22 A | 2FS+13d | 100% |  | Wilder Bento |  | NETPROJECT | 70 | 701 | 701 |
| 9 | 3.2 | Campanha 02 - Nov/23 | milestone | 0d | 2023-11-07 A | 2023-11-14 A | 2FS+97d | 100% |  | Ismayllen Masson |  | NETPROJECT | 80 | 653 | 653 |
| 10 | 3.3 | Campanha 03 - Fev/24 | milestone | 0d | 2024-02-05 A | 2024-02-13 A |  | 100% | must start on 2024-02-05 | Ismayllen Masson |  | NETPROJECT | 90 | 661 | 661 |
| 11 | 3.4 | Campanha 04 - Mai/24 | milestone | 0d | 2024-05-27 A | 2024-06-05 A | 10FS+84d | 100% | must start on 2024-05-27 | Felipe Normando; Ismayllen Masson | 1271.2h | NETPROJECT | 100 | 654 | 654 |
| 12 | 3.5 | Campanha 05 - ago/24 | milestone | 0d | 2024-08-21 A | 2024-08-28 A | 11FS+85d | 100% | must start on 2024-08-21 | Ismayllen Masson; Wilder Bento | 768h | NETPROJECT | 110 | 662 | 662 |
| 13 | 3.6 | Campanha 06 - nov/24 | milestone | 0d | 2024-11-04 A | 2024-11-18 A | 12FS+81d | 100% | must start on 2024-11-04 | Ismayllen Masson |  | NETPROJECT | 120 | 663 | 663 |
| 14 | 3.7 | Campanha 07 - fev/25 | milestone | 0d | 2025-02-04 A | 2025-02-17 A | 13FS+88d | 100% | must start on 2025-02-04 | Ismayllen Masson |  | NETPROJECT | 130 | 664 | 664 |
| 15 | 3.8 | Campanha 08 - mai/25 | milestone | 0d | 2025-05-26 A | 2025-05-31 A | 14FS+76d | 100% | must start on 2025-05-26 | Felipe Normando; Wilder Bento | 768h | NETPROJECT | 140 | 665 | 665 |
| 16 | 3.9 | Campanha do resgate | milestone | 0d | 2025-07-21 A | 2025-08-01 |  | 50% | start no earlier than 2025-07-21 | Yuri Martins |  | NETPROJECT | 150 | 1914 | 1914 |
| 17 | 3.10 | Campanha resgate 2 | milestone | 0d | 2025-07-28 A | 2025-08-21 A |  | 100% | start no earlier than 2025-07-28 | Wilder Bento |  | NETPROJECT | 160 | 1915 | 1915 |
| 18 | 3.11 | Campanha 09 - ago/25 | milestone | 0d | 2025-08-20 | 2025-09-02 | 15FS+80d |  |  | Ismayllen Masson |  | NETPROJECT | 2840 | 666 | 666 |
| 19 | 3.12 | Campanha 10 - nov/25 | milestone | 0d | 2025-11-10 | 2025-11-21 | 18FS+88d |  | must start on 2025-11-10 | Yuri Martins |  | NETPROJECT | 2850 | 667 | 667 |
| 20 | 3.13 | Resgate - SPT - 2a etapa. | milestone | 0d | 2025-09-29 | 2025-10-14 |  |  | start no earlier than 2025-09-29 | Yuri Martins |  | NETPROJECT | 2851 | 1993 | 1993 |
| 21 | 3.14 | Resgate - SPT - 2a etapa | milestone | 0d | 2025-09-23 A | 2025-10-10 A |  | 100% | must start on 2025-09-23 | Wilder Bento |  | NETPROJECT | 2852 | 1994 | 1994 |
| 22 | 3.15 | Resgate - SPT - 3a etapa | milestone | 0d | 2025-10-15 | 2025-10-22 |  |  | must start on 2025-10-15 | Ismayllen Masson |  | NETPROJECT | 2853 | 1995 | 1995 |
| 23 | 3.16 | Resgate - SPT - 3a etapa . | milestone | 0d | 2025-10-15 | 2025-10-30 |  |  | start no earlier than 2025-10-15 | Ana Clara |  | NETPROJECT | 2854 | 2017 | 2017 |
| 24 | 3.17 | Resgate - SPT - 4a etapa | milestone | 0d | 2025-10-20 | 2025-11-07 |  |  | start no earlier than 2025-10-20 | Felipe Normando |  | NETPROJECT | 2855 | 2018 | 2018 |
| 25 | 3.18 | Campanha 11 - fev/26 | milestone | 0d | 2026-02-23 | 2026-02-28 |  |  | must start on 2026-02-23 | Felipe Normando; Wilder Bento | 768h | NETPROJECT | 2856 | 2107 | 2107 |
| 26 | 3.19 | Campanha 12 - mai/26 | milestone | 0d | 2026-05-04 | 2026-05-09 |  |  | start no earlier than 2026-05-04 | Felipe Normando |  | NETPROJECT | 2857 | 2108 | 2108 |
| 27 | 3.20 | Campanha 13 -ago/26 | milestone | 0d | 2026-08-03 | 2026-08-08 |  |  | start no earlier than 2026-08-03 | Felipe Normando |  | NETPROJECT | 2858 | 2109 | 2109 |

| ID | WBS | Task | Type | Duration | Start | Finish | Predecessors | Complete | Constraint | Resources | Work | Text15 | Text19 | Number15 | Number20 |
| --- | --- | --- | --- | --- | --- | --- | --- | --- | --- | --- | --- | --- | --- | --- | --- |
| 28 | 4 | **RELATÓRIOS** |  | 0d | 2023-08-01 A | 2026-09-10 |  | 62% |  |  |  | NETPROJECT | 2860 | 655 | 655 |
| 29 | 4.1 | Relatório Consolidado SPT | milestone | 0d | 2024-12-02 A | 2024-12-06 A |  | 100% | must start on 2024-12-02 | Felipe Normando; Ismayllen Masson | 384h | NETPROJECT | 180 | 1768 | 1768 |
| 30 | 4.2 | Relatório Consolidado DGN | milestone | 0d | 2024-11-25 A | 2024-11-29 A |  | 100% | must start on 2024-11-25 | Felipe Normando |  | NETPROJECT | 190 | 1767 | 1767 |
| 31 | 4.3 | Relatórios Consolidados - Relatório aditivos | milestone | 0d | 2025-04-07 A | 2025-04-11 A |  | 100% | must start on 2025-04-07 | Ismayllen Masson |  | NETPROJECT | 230 | 1834 | 1834 |
| 32 | 4.4 | Relatório Consolidado FOR | milestone | 0d | 2024-12-03 A | 2024-12-07 A |  | 100% | must start on 2024-12-03 | Felipe Normando; Ismayllen Masson | 384h | NETPROJECT | 230 | 1769 | 1769 |
| 33 | 4.5 | Relatório Consolidado JAC | milestone | 0d | 2024-12-04 A | 2024-12-09 A |  | 100% | must start on 2024-12-04 | Felipe Normando; Ismayllen Masson | 384h | NETPROJECT | 240 | 1770 | 1770 |
| 34 | 4.6 | Relatórios Consolidados | milestone | 0d | 2023-12-18 A | 2023-12-22 A |  | 100% | start no earlier than 2023-12-18 | Felipe Normando; Ismayllen Masson | 640h | NETPROJECT | 250 | 957 | 957 |
| 35 | 4.7 | Relatório 01 - ago/23 | milestone | 0d | 2023-09-07 A | 2023-09-10 A | 8FS+15d | 100% |  | Ana Clara |  | NETPROJECT | 260 | 702 | 702 |
| 36 | 4.8 | Relatório 02 - nov/23 | milestone | 0d | 2023-11-30 A | 2023-12-01 A | 9FS+15d | 100% |  | Ana Clara |  | NETPROJECT | 270 | 656 | 656 |
| 37 | 4.9 | Relatório 0 3 - fev/24 | milestone | 0d | 2024-02-15 A | 2024-02-16 A | 10FS+15d | 100% | must start on 2024-02-15 | Ana Clara |  | NETPROJECT | 280 | 657 | 657 |
| 38 | 4.10 | Relatório 04 - mai/24 | milestone | 0d | 2024-06-10 A | 2024-06-11 A |  | 100% | must start on 2024-06-10 | Ana Clara; Ismayllen Masson | 256h | NETPROJECT | 290 | 658 | 658 |
| 39 | 4.11 | Relatório 05 - ago/24 | milestone | 0d | 2024-09-02 A | 2024-09-03 A |  | 100% | must start on 2024-09-02 | Ismayllen Masson |  | NETPROJECT | 300 | 668 | 668 |
| 40 | 4.12 | Relatório 06 - nov/24 | milestone | 0d | 2024-12-04 | 2024-12-05 | 13FS+15d |  |  | Ana Clara |  | NETPROJECT | 310 | 669 | 669 |
| 41 | 4.13 | Relatório 07 - fev/25 | milestone | 0d | 2025-03-05 | 2025-03-05 | 14FS+15d |  |  | Ana Clara |  | NETPROJECT | 320 | 670 | 670 |
| 42 | 4.14 | Relatório 08 - mai/25 | milestone | 0d | 2025-06-16 | 2025-06-17 | 15FS+15d |  |  | Ana Clara |  | NETPROJECT | 330 | 671 | 671 |
| 43 | 4.15 | Relatório 10 - nov/25 | milestone | 0d | 2023-08-01 | 2023-08-02 |  |  |  | Ana Clara |  | NETPROJECT | 390 | 673 | 673 |
| 44 | 4.16 | Relatório 09 - ago/25 | milestone | 0d | 2025-09-18 | 2025-09-19 | 18FS+15d |  |  | Ana Clara |  | NETPROJECT | 400 | 672 | 672 |
| 45 | 4.17 | Relatório Consolidado Aditivo | milestone | 0d | 2025-10-01 A | 2025-10-03 | 18FS+15d | 50% | must start on 2025-10-01 | Ismayllen Masson |  | NETPROJECT | 410 | 1921 | 1921 |
| 46 | 4.18 | Relatório resgate - Consollidado | milestone | 0d | 2025-09-01 A | 2025-09-03 A |  | 100% | start no earlier than 2025-09-01 | Felipe Normando |  | NETPROJECT | 420 | 1923 | 1923 |
| 47 | 4.19 | Relatório Consolidado DGN - ago/25 | milestone | 0d | 2025-10-01 A | 2025-10-03 | 18FS+15d | 50% | must start on 2025-10-01 | Ismayllen Masson |  | NETPROJECT | 430 | 1918 | 1918 |
| 48 | 4.20 | Relatório Consolidado FOR - nov/25 | milestone | 0d | 2025-12-08 | 2025-12-11 | 18FS+15d |  | must start on 2025-12-08 | Felipe Normando |  | NETPROJECT | 440 | 1922 | 1922 |
| 49 | 4.21 | Relatório Consolidado SPT -nov/25 | milestone | 0d | 2025-12-08 | 2025-12-11 | 18FS+15d |  | must start on 2025-12-08 | Felipe Normando |  | NETPROJECT | 450 | 1917 | 1917 |
| 50 | 4.22 | Relatório Consolidado JAC -nov/25 | milestone | 0d | 2026-01-12 | 2026-01-14 | 18FS+15d |  | must start on 2026-01-12 | Felipe Normando |  | NETPROJECT | 460 | 1919 | 1919 |
| 51 | 4.23 | Relatório resgate - Consolidado 2 | milestone | 0d | 2025-12-22 | 2025-12-24 | 24FS+15d |  | must start on 2025-12-22 | Felipe Normando |  | NETPROJECT | 470 | 2022 | 2022 |
| 52 | 4.24 | Relatórios parciais - mai/26 | milestone | 0d | 2026-05-15 | 2026-05-15 | 26FS+5d |  | start no earlier than 2026-04-18 | Felipe Normando |  | NETPROJECT | 472 | 2111 | 2111 |
| 53 | 4.25 | Relatórios parciais - fev/26 | milestone | 0d | 2026-03-06 | 2026-03-06 | 25FS+5d |  |  | Felipe Normando |  | NETPROJECT | 473 | 2110 | 2110 |
| 54 | 4.26 | Relatórios parciais - ago/26 | milestone | 0d | 2026-08-14 | 2026-08-14 | 27FS+5d |  |  | Felipe Normando |  | NETPROJECT | 473 | 2112 | 2112 |
| 55 | 4.27 | Relatórios consolidados - 2026 | milestone | 0d | 2026-09-10 | 2026-09-10 | 27FS+30d |  |  | Felipe Normando |  | NETPROJECT | 474 | 2113 | 2113 |
| 56 | 4.28 | Relatório consolidado - Nexo Causal | milestone | 0d | 2025-12-30 | 2025-12-30 |  |  | start no earlier than 2025-12-30 | Yuri Martins |  | NETPROJECT | 510 | 2125 | 2125 |
